# Разработка ПО

Schedule from ProjectLibre, 2026-09-18 to 2027-04-07.

## Calendars

- Стандартный: Mon-Fri 08:00-12:00, 13:00-17:00; Sat-Sun off. Exceptions (off unless hours are given): 2026-11-05 to 2026-11-06 09:00-13:00, 14:00-17:00, 2026-11-06 to 2026-11-07, 2026-12-23 to 2026-12-24 09:00-13:00, 14:00-17:00, 2026-12-24 to 2026-12-25, 2026-12-30 to 2026-12-31 09:00-13:00, 14:00-17:00, 2026-12-31 to 2027-01-02, 2027-01-05 to 2027-01-06 09:00-13:00, 14:00-17:00, 2027-01-06 to 2027-01-07, 2027-03-06 to 2027-03-07 09:00-13:00, 14:00-17:00, 2027-03-07 to 2027-03-08.

## Resources

| Resource | Group | Rate | Cost per use | Notes |
| --- | --- | --- | --- | --- |
| Не назначено |  |  |  |  |
| Руководитель проекта | A | 15 |  |  |
| Программист 1 | A | 14 |  |  |
| Программист 2 | A | 15 |  |  |
| Программист 3 | A | 12 |  |  |
| Бизнес-аналитик | AB | 11 |  | Таблица 2.6: нормы затрат A и B. Ставки обеих таблиц: 11 руб./ч, сверхурочная 14 руб./ч; разные ставки B в задании не указаны. Назначения по таблице A. |
| Тест-инженер | A | 8 |  |  |
| Технический лидер | A | 17 |  |  |
| Компьютер | A | 2780 |  |  |
| Сервер | A | 3950 |  |  |
| Принтер | A | 315 |  |  |
| Ноутбук | A | 2450 |  |  |
| МФУ | A | 1120 |  |  |
| Планшет | A | 1780 |  |  |
| Серверная ОС | A |  | 3130 |  |
| Бумага для принтера | A | 15 |  |  |
| Картридж для принтера | A | 115 |  |  |
| Интернет |  | 50 |  | По заданию тип З (затраты), 50 руб./мес. В ProjectLibre 1.9.8 отдельного типа Cost нет: эквивалент материальный ресурс, единица мес., ставка 50 руб. Назначения 0,2 мес. = 10 руб.; 0,24 мес. = 12 руб. Никакие дополнительные ежемесячные расходы не начислены. |
| Системный аналитик | A | 11 |  | Отсутствует в таблице 2.6, присутствует в таблице 2.7. По указанию пользователя ставки как у бизнес-аналитика: 11 и 14 руб./ч. |

## Schedule

| ID | WBS | Task | Type | Duration | Start | Finish | Predecessors | Resources |
| --- | --- | --- | --- | --- | --- | --- | --- | --- |
| 1 | 1 | Начало проекта | milestone | 0d | 2026-09-18 | 2026-09-18 |  |  |
| 2 | 2 | **Анализ и сбор требований** |  | 21d | 2026-09-18 | 2026-10-19 |  |  |
| 3 | 2.1 | Встреча с заказчиком |  | 1d | 2026-09-18 | 2026-09-21 | 1 | Бизнес-аналитик; Технический лидер; Руководитель проекта; Планшет [200%]; Ноутбук |
| 4 | 2.2 | Написание документа требований |  | 10d | 2026-09-21 | 2026-10-05 | 3 | Бизнес-аналитик; Технический лидер; Ноутбук; Интернет [20%]; МФУ; Бумага для принтера |
| 5 | 2.3 | Тестирование требований |  | 3d | 2026-10-05 | 2026-10-08 | 4 | Тест-инженер |
| 6 | 2.4 | Встреча с заказчиком |  | 1d | 2026-10-08 | 2026-10-09 | 5 | Бизнес-аналитик; Руководитель проекта |
| 7 | 2.5 | Подготовка договора и устава проекта |  | 4d | 2026-10-09 | 2026-10-15 | 6 | Руководитель проекта; Ноутбук; Принтер; Картридж для принтера; Бумага для принтера |
| 8 | 2.6 | Согласование договора |  | 1d | 2026-10-15 | 2026-10-16 | 7 | Руководитель проекта |
| 9 | 2.7 | Согласование устава проекта |  | 2d | 2026-10-15 | 2026-10-19 | 7 | Руководитель проекта |
| 10 | 2.8 | Утверждение договора и устава проекта | milestone | 0d | 2026-10-19 | 2026-10-19 | 8, 9 |  |
| 11 | 3 | **Проектирование решения** |  | 27.88d | 2026-10-19 | 2026-11-27 |  |  |
| 12 | 3.1 | Написание и согласование ТЗ |  | 15d | 2026-10-19 | 2026-11-09 | 10 | Бизнес-аналитик; Технический лидер; Компьютер; Картридж для принтера; Бумага для принтера; Интернет [24%] |
| 13 | 3.2 | Утверждение ТЗ | milestone | 0d | 2026-11-09 | 2026-11-09 | 12 |  |
| 14 | 3.3 | Обучение специалистов предметной области |  | 4d | 2026-11-09 | 2026-11-13 | 13 | Бизнес-аналитик [30%]; Системный аналитик [50%]; Руководитель проекта [50%]; Программист 1 [50%]; Программист 2 [50%]; Программист 3 [50%]; Тест-инженер [50%] |
| 15 | 3.4 | Проектирование архитектуры решения |  | 5d | 2026-11-13 | 2026-11-20 | 14 | Технический лидер [50%] |
| 16 | 3.5 | Тестирование архитектуры решения |  | 5d | 2026-11-20 | 2026-11-27 | 15 | Технический лидер; Тест-инженер |
| 17 | 3.6 | Установка средств разработки и тестирования |  | 4d | 2026-11-09 | 2026-11-13 | 13 | Технический лидер [50%]; Программист 1 [50%]; Программист 2 [50%]; Программист 3 [50%]; Тест-инженер [50%] |
| 18 | 3.7 | Написание тест-плана и вариантов тестирования системы |  | 6d | 2026-11-09 | 2026-11-17 | 13 | Тест-инженер [50%] |
| 19 | 3.8 | Встреча с заказчиком |  | 1d | 2026-11-17 | 2026-11-18 | 18 | Бизнес-аналитик [40%]; Технический лидер; Руководитель проекта |
| 20 | 4 | **Разработка и внутреннее тестирование** |  | 75.12d | 2026-11-18 | 2027-03-09 |  |  |
| 21 | 4.1 | Встреча разработчиков, декомпозиция задач, назначение ответственных |  | 1d | 2026-11-18 | 2026-11-19 | 19 | Программист 1; Программист 2; Программист 3; Технический лидер |
| 22 | 4.2 | Программирование |  | 45d | 2026-11-19 | 2027-01-27 | 21 | Программист 1; Программист 2; Программист 3; Сервер; Серверная ОС [50%] |
| 23 | 4.3 | Улучшение кода |  | 11d | 2027-01-27 | 2027-02-11 | 22 | Технический лидер |
| 24 | 4.4 | Встреча разработчиков для предварительной демонстрации |  | 1d | 2027-02-11 | 2027-02-12 | 23 | Программист 1; Программист 2; Программист 3; Технический лидер |
| 25 | 4.5 | Демонстрация заказчику |  | 1d | 2027-02-12 | 2027-02-15 | 24 | Бизнес-аналитик; Технический лидер; Руководитель проекта |
| 26 | 4.6 | Первая установка решения в среду тестирования |  | 5d | 2027-02-15 | 2027-02-22 | 25 | Технический лидер; Тест-инженер |
| 27 | 4.7 | Прохождение тест-кейсов |  | 12d | 2027-02-22 | 2027-03-09 | 26 | Тест-инженер |
| 28 | 4.8 | Внутреннее тестирование | milestone | 0d | 2027-03-09 | 2027-03-09 | 27 |  |

| ID | WBS | Task | Type | Duration | Start | Finish | Predecessors | Resources |
| --- | --- | --- | --- | --- | --- | --- | --- | --- |
| 29 | 5 | **Тестирование на стороне заказчика** |  | 16d | 2027-03-09 | 2027-03-31 |  |  |
| 30 | 5.1 | Первая установка в тестовую среду заказчика |  | 2d | 2027-03-09 | 2027-03-11 | 28 | Технический лидер; Тест-инженер |
| 31 | 5.2 | Поставки бета-версий |  | 4d | 2027-03-11 | 2027-03-17 | 30 | Технический лидер |
| 32 | 5.3 | Доработка и исправление неисправностей |  | 10d | 2027-03-17 | 2027-03-31 | 31 | Программист 1; Программист 2; Программист 3 |
| 33 | 5.4 | Прохождение тестирования на стороне заказчика | milestone | 0d | 2027-03-31 | 2027-03-31 | 32 |  |
| 34 | 6 | **Внедрение** |  | 5d | 2027-03-31 | 2027-04-07 |  |  |
| 35 | 6.1 | Установка на рабочий сервер |  | 3d | 2027-03-31 | 2027-04-05 | 33 | Технический лидер |
| 36 | 6.2 | Написание инструкций |  | 5d | 2027-03-31 | 2027-04-07 | 33 | Бизнес-аналитик; Картридж для принтера; Бумага для принтера |
| 37 | 6.3 | Обучение пользователей |  | 2d | 2027-03-31 | 2027-04-02 | 33 | Бизнес-аналитик |
| 38 | 6.4 | Завершение внедрения | milestone | 0d | 2027-04-07 | 2027-04-07 | 35, 36, 37 |  |
| 39 | 7 | Конец проекта | milestone | 0d | 2027-04-07 | 2027-04-07 | 38 |  |
